# 專案2

Schedule from MS Project, 2005-03-09 to 2005-06-24, status date 2005-06-03, costs in NT$, A marks actual dates.
第二組

## Calendars

- 標準: Mon-Sun 09:00-12:00, 13:00-23:30.

## Resources

| Resource | Rate |
| --- | --- |
| 程式設計 |  |
| 文件製作 |  |
| 程式美工設計 |  |
| 羅振誠 | 70 |
| 魏孟成 | 70 |
| 許漢昇 | 70 |
| 周尚樺 | 70 |
| 黃鈺雯 | 70 |
| 陳瑋 | 70 |
| 高振展 | 70 |
| 戚玉樑老師 | 70 |
| 小平學長 | 70 |
| 小貞學姐 | 70 |

## Schedule

| ID | WBS | Task | Type | Duration | Start | Finish | Predecessors | Complete | Constraint | Resources | Work | Actual work | Cost | Actual cost |
| --- | --- | --- | --- | --- | --- | --- | --- | --- | --- | --- | --- | --- | --- | --- |
| 1 | 1 | **校園UDDI註冊中心系統** |  | 180.94d? | 2005-03-09 08:00 A | 2005-06-24 12:00 A |  | 100% |  |  | 864.58h | 864.58h | 60,520.41 | 60,520.41 |
| 2 | 1.1 | **專案定義** |  | 12.31d | 2005-03-09 08:00 A | 2005-03-16 14:00 A |  | 100% |  |  | 84h | 84h | 5,880 | 5,880 |
| 3 | 1.1.1 | 專案方向會議 |  | 0.5d | 2005-03-09 08:00 A | 2005-03-09 14:00 A |  | 100% | start no later than 2005-03-09 08:00 | 周尚樺; 羅振誠; 許漢昇; 黃鈺雯; 高振展; 陳瑋; 魏孟成 | 28h | 28h | 1,960 | 1,960 |
| 4 | 1.1.2 | 專案初步規劃會議 |  | 0.5d | 2005-03-11 08:00 A | 2005-03-11 14:00 A |  | 100% | start no later than 2005-03-11 08:00 | 周尚樺; 羅振誠; 許漢昇; 黃鈺雯; 高振展; 陳瑋; 魏孟成 | 28h | 28h | 1,960 | 1,960 |
| 5 | 1.1.3 | 建立專案基本概念會議 |  | 0.5d | 2005-03-16 08:00 A | 2005-03-16 14:00 A |  | 100% | start no later than 2005-03-16 08:00 | 周尚樺; 羅振誠; 許漢昇; 黃鈺雯; 高振展; 陳瑋; 魏孟成 | 28h | 28h | 1,960 | 1,960 |
| 6 | 1.2 | **需求分析** |  | 5.56d | 2005-03-30 08:00 A | 2005-04-02 14:00 A |  | 100% |  |  | 120h | 120h | 8,400 | 8,400 |
| 7 | 1.2.1 | 與老師訪談校內系統 |  | 1d | 2005-03-30 08:00 A | 2005-03-30 18:00 A | 5 | 100% | start no later than 2005-03-30 08:00 | 周尚樺; 羅振誠; 許漢昇; 黃鈺雯; 高振展; 陳瑋; 魏孟成 | 56h | 56h | 3,920 | 3,920 |
| 8 | 1.2.2 | 評估系統可行性 |  | 1d | 2005-04-01 08:00 A | 2005-04-01 18:00 A | 7 | 100% | start no later than 2005-04-01 08:00 | 周尚樺; 羅振誠; 許漢昇; 黃鈺雯; 高振展; 陳瑋; 魏孟成 | 56h | 56h | 3,920 | 3,920 |
| 9 | 1.2.3 | 分析所需軟硬體 |  | 0.5d | 2005-04-02 08:00 A | 2005-04-02 14:00 A | 8 | 100% | start no later than 2005-04-02 08:00 | 羅振誠; 許漢昇 | 8h | 8h | 560 | 560 |
| 10 | 1.3 | **專案進度管理會議** |  | 109.69d | 2005-04-19 08:00 A | 2005-06-23 08:00 A |  | 100% |  |  | 13.56h | 13.56h | 949.2 | 949.2 |
| 11 | 1.3.1 | 專案進度管理會議 1 | milestone | 0.2d | 2005-04-19 08:00 A | 2005-04-19 10:36 A |  | 100% | start no later than 2005-04-19 08:00 | 羅振誠 [20%]; 周尚樺 [20%]; 許漢昇 [20%]; 黃鈺雯 [20%]; 高振展 [20%]; 陳瑋 [20%] | 1.92h | 1.92h | 134.4 | 134.4 |
| 12 | 1.3.2 | 專案進度管理會議 2 | milestone | 0.2d | 2005-04-26 08:00 A | 2005-04-26 10:36 A |  | 100% | start no later than 2005-04-26 08:00 | 羅振誠 [20%]; 陳瑋 [20%]; 周尚樺 [20%]; 許漢昇 [20%]; 黃鈺雯 [20%]; 高振展 [20%] | 1.92h | 1.92h | 134.4 | 134.4 |
| 13 | 1.3.3 | 專案進度管理會議 3 | milestone | 0.2d | 2005-05-03 08:00 A | 2005-05-03 10:36 A |  | 100% | start no later than 2005-05-03 08:00 | 羅振誠 [20%]; 周尚樺 [20%]; 許漢昇 [20%]; 黃鈺雯 [20%]; 高振展 [20%]; 陳瑋 [20%] | 1.92h | 1.92h | 134.4 | 134.4 |
| 14 | 1.3.4 | 專案進度管理會議 4 | milestone | 0.2d | 2005-05-10 08:00 A | 2005-05-10 10:36 A |  | 100% | start no later than 2005-05-10 08:00 | 羅振誠 [20%]; 周尚樺 [20%]; 許漢昇 [20%]; 黃鈺雯 [20%]; 高振展 [20%]; 陳瑋 [20%] | 1.92h | 1.92h | 134.4 | 134.4 |
| 15 | 1.3.5 | 專案進度管理會議 5 | milestone | 0.2d | 2005-05-17 08:00 A | 2005-05-17 10:36 A |  | 100% | start no later than 2005-05-17 08:00 | 羅振誠 [20%]; 周尚樺 [20%]; 許漢昇 [20%]; 黃鈺雯 [20%]; 高振展 [20%]; 陳瑋 [20%] | 1.92h | 1.92h | 134.4 | 134.4 |
| 16 | 1.3.6 | 專案進度管理會議 6 | milestone | 0.2d | 2005-05-24 08:00 A | 2005-05-24 10:36 A |  | 100% | start no later than 2005-05-24 08:00 | 羅振誠 [20%]; 周尚樺 [20%]; 許漢昇 [20%]; 黃鈺雯 [20%]; 高振展 [20%]; 陳瑋 [20%] | 1.92h | 1.92h | 134.4 | 134.4 |
| 17 | 1.3.7 | 專案進度管理會議 7 | milestone | 0.2d | 2005-06-02 08:00 A | 2005-06-02 10:36 A |  | 100% | start no later than 2005-06-02 08:00 | 羅振誠 [20%]; 周尚樺 [20%]; 許漢昇 [20%]; 黃鈺雯 [20%]; 高振展 [20%]; 陳瑋 [20%] | 1.92h | 1.92h | 134.4 | 134.4 |
| 18 | 1.3.8 | 專案進度管理會議 8 | milestone | 0.07d | 2005-06-08 17:24 A | 2005-06-08 18:00 A |  | 100% | start no later than 2005-06-09 08:00 | 羅振誠 [20%]; 周尚樺 [20%]; 許漢昇 [20%]; 黃鈺雯 [20%]; 高振展 [20%]; 陳瑋 [20%] | 0.12h | 0.12h | 8.4 | 8.4 |
| 19 | 1.3.9 | 專案進度管理會議 9 | milestone | 0d | 2005-06-16 08:00 A | 2005-06-16 08:00 A |  | 100% | start no later than 2005-06-16 08:00 | 羅振誠 [20%]; 周尚樺 [20%]; 許漢昇 [20%]; 黃鈺雯 [20%]; 高振展 [20%]; 陳瑋 [20%] |  |  |  |  |
| 20 | 1.3.10 | 專案進度管理會議 10 | milestone | 0d | 2005-06-23 08:00 A | 2005-06-23 08:00 A |  | 100% | start no later than 2005-06-23 08:00 | 羅振誠 [20%]; 周尚樺 [20%]; 許漢昇 [20%]; 黃鈺雯 [20%]; 高振展 [20%]; 陳瑋 [20%] |  |  |  |  |
| 21 | 1.4 | 收集系統開發相關資訊 |  | 0.5d | 2005-04-07 08:00 A | 2005-04-07 14:00 A |  | 100% | start no later than 2005-04-07 08:00 | 高振展; 陳瑋 | 8h | 8h | 560 | 560 |
| 22 | 1.5 | **專案工作規劃** |  | 11.12d | 2005-04-09 08:00 A | 2005-04-15 18:00 A |  | 100% |  |  | 60h | 60h | 4,200 | 4,200 |
| 23 | 1.5.1 | 系統開發流程規劃 |  | 0.5d | 2005-04-09 08:00 A | 2005-04-09 14:00 A | 21 | 100% | start no later than 2005-04-09 08:00 | 周尚樺; 羅振誠; 許漢昇; 黃鈺雯; 高振展; 陳瑋; 魏孟成 | 28h | 28h | 1,960 | 1,960 |
| 24 | 1.5.2 | 初步工作分解 |  | 0.5d | 2005-04-11 08:00 A | 2005-04-11 14:00 A | 21 | 100% | start no later than 2005-04-11 08:00 | 羅振誠; 許漢昇 | 8h | 8h | 560 | 560 |
| 25 | 1.5.3 | 初步工作分派 |  | 0.5d | 2005-04-12 08:00 A | 2005-04-12 14:00 A | 24 | 100% | start no later than 2005-04-12 08:00 | 羅振誠; 許漢昇 | 8h | 8h | 560 | 560 |
| 26 | 1.5.4 | 規劃系統大綱 | milestone | 1d | 2005-04-15 08:00 A | 2005-04-15 18:00 A |  | 100% | start no later than 2005-04-15 08:00 | 魏孟成; 周尚樺 | 16h | 16h | 1,120 | 1,120 |

| ID | WBS | Task | Duration | Start | Finish | Predecessors | Complete | Constraint | Resources | Work | Actual work | Cost | Actual cost |
| --- | --- | --- | --- | --- | --- | --- | --- | --- | --- | --- | --- | --- | --- |
| 27 | 1.6 | **開發環境建置** | 20.75d | 2005-04-14 08:00 A | 2005-04-26 14:00 A |  | 100% |  |  | 83.47h | 83.47h | 5,842.94 | 5,842.94 |
| 28 | 1.6.1 | **硬體方面** | 16d | 2005-04-14 08:00 A | 2005-04-23 16:28 A |  | 100% |  |  | 52.47h | 52.47h | 3,672.94 | 3,672.94 |
| 29 | 1.6.1.1 | 硬體架設 | 1d | 2005-04-14 08:00 A | 2005-04-14 18:00 A | 25 | 100% | start no later than 2005-04-14 08:00 | 黃鈺雯 | 8h | 8h | 560 | 560 |
| 30 | 1.6.1.2 | 硬體測試 | 1d | 2005-04-18 08:00 A | 2005-04-18 18:00 A | 29 | 100% | start no later than 2005-04-18 08:00 | 羅振誠 [50%]; 許漢昇 [62.5%]; 魏孟成 [62.5%]; 周尚樺 [62.5%] | 19h | 19h | 1,330 | 1,330 |
| 31 | 1.6.1.3 | 網路架設 | 0.62d | 2005-04-21 08:00 A | 2005-04-21 15:00 A | 30 | 100% | start no later than 2005-04-21 08:00 | 羅振誠 [60%]; 許漢昇; 魏孟成 [80%] | 12h | 12h | 840 | 840 |
| 32 | 1.6.1.4 | 網路測試 | 0.81d | 2005-04-23 08:00 A | 2005-04-23 16:28 A | 31 | 100% | start no later than 2005-04-23 08:00 | 羅振誠 [46.4%]; 許漢昇; 魏孟成 | 13.47h | 13.47h | 942.94 | 942.94 |
| 33 | 1.6.2 | **軟體方面** | 1.5d | 2005-04-17 15:30 A | 2005-04-18 14:00 A |  | 100% |  |  | 12h | 12h | 840 | 840 |
| 34 | 1.6.2.1 | 軟體安裝 | 1d | 2005-04-17 15:30 A | 2005-04-17 23:30 A | 30, 32 | 100% | start no later than 2005-04-18 08:00 | 黃鈺雯 | 8h | 8h | 560 | 560 |
| 35 | 1.6.2.2 | 軟體測試 | 0.5d | 2005-04-18 08:00 A | 2005-04-18 14:00 A | 34 | 100% | start no later than 2005-04-18 08:00 | 陳瑋 | 4h | 4h | 280 | 280 |
| 36 | 1.6.3 | **系統環境設定** | 2.19d | 2005-04-25 08:00 A | 2005-04-26 14:00 A |  | 100% |  |  | 19h | 19h | 1,330 | 1,330 |
| 37 | 1.6.3.1 | 資料庫設定 | 1d | 2005-04-25 08:00 A | 2005-04-25 18:00 A | 30, 35 | 100% | start no later than 2005-04-25 08:00 | 羅振誠; 魏孟成 | 16h | 16h | 1,120 | 1,120 |
| 38 | 1.6.3.2 | 資料庫與系統整合測試 | 0.5d | 2005-04-26 08:00 A | 2005-04-26 14:00 A | 37 | 100% | start no later than 2005-04-26 08:00 | 許漢昇 [75%] | 3h | 3h | 210 | 210 |
| 39 | 1.7 | **UDDI註冊中心建置** | 118.5d? | 2005-04-15 09:00 A | 2005-06-24 12:00 A |  | 100% |  |  | 477.87h | 477.87h | 33,450.67 | 33,450.67 |
| 40 | 1.7.1 | **網站風格設計** | 7.75d | 2005-05-12 08:00 A | 2005-05-16 18:00 A |  | 100% |  | 羅振誠; 魏孟成 | 209h | 209h | 14,630 | 14,630 |
| 41 | 1.7.1.1 | 構思網站設計風格 | 3d | 2005-05-12 08:00 A | 2005-05-13 20:30 A |  | 100% | start no later than 2005-05-12 08:00 | 陳瑋; 高振展; 黃鈺雯 | 72h | 72h | 5,040 | 5,040 |
| 42 | 1.7.1.2 | 繪製網站介面雛形 | 1d | 2005-05-16 08:00 A | 2005-05-16 18:00 A | 41 | 100% | start no later than 2005-05-16 08:00 | 許漢昇; 周尚樺 [62.5%] | 13h | 13h | 910 | 910 |
| 43 | 1.7.2 | **技術訓練** | 90.52d | 2005-04-19 08:00 A | 2005-06-11 18:40 A |  | 100% |  |  | 83h | 83h | 5,810 | 5,810 |
| 44 | 1.7.2.1 | **研究web services** | 90.52d | 2005-04-19 08:00 A | 2005-06-11 18:40 A |  | 100% |  |  | 83h | 83h | 5,810 | 5,810 |
| 45 | 1.7.2.1.1 | 研究XML原理 | 1d | 2005-04-19 08:00 A | 2005-04-19 18:00 A |  | 100% | start no later than 2005-04-19 08:00 | 羅振誠 [37.5%]; 魏孟成 [37.5%]; 小平學長 [37.5%] | 9h | 9h | 630 | 630 |
| 46 | 1.7.2.1.2 | 研究SOAP傳輸原理 | 7d | 2005-04-19 08:00 A | 2005-04-23 11:00 A |  | 100% | start no later than 2005-04-19 08:00 | 魏孟成; 羅振誠 [21.4%] | 25h | 25h | 1,750 | 1,750 |
| 47 | 1.7.2.1.3 | 研究WSDL的撰寫 | 2d | 2005-04-26 08:00 A | 2005-04-27 11:30 A |  | 100% | start no later than 2005-04-26 08:00 | 魏孟成 [40%]; 羅振誠 | 9h | 9h | 630 | 630 |
| 48 | 1.7.2.1.4 | 研究UDDI規範 | 3.33d | 2005-05-03 08:00 A | 2005-05-04 23:10 A |  | 100% | start no later than 2005-05-03 08:00 | 魏孟成; 羅振誠 | 20h | 20h | 1,400 | 1,400 |
| 49 | 1.7.2.1.5 | AXIS軟體研究 | 2d | 2005-05-17 08:00 A | 2005-05-18 11:30 A |  | 100% | start no later than 2005-05-17 08:00 | 魏孟成 [40%]; 羅振誠 | 10h | 10h | 700 | 700 |
| 50 | 1.7.2.1.6 | 公有與私有註冊中心探討 | 4.27d | 2005-06-07 08:00 A | 2005-06-11 18:40 A |  | 100% | start no later than 2005-06-07 08:00 | 魏孟成 [40%]; 羅振誠 [50%] | 10h | 10h | 700 | 700 |

| ID | WBS | Task | Duration | Start | Finish | Predecessors | Complete | Constraint | Resources | Work | Actual work | Cost | Actual cost |
| --- | --- | --- | --- | --- | --- | --- | --- | --- | --- | --- | --- | --- | --- |
| 51 | 1.7.3 | **前端網頁建置** | 37.12d | 2005-04-15 09:00 A | 2005-05-06 23:30 A |  | 100% |  |  | 60.5h | 60.5h | 4,235 | 4,235 |
| 52 | 1.7.3.1 | 前端版面規劃 | 15.19d | 2005-04-15 09:00 A | 2005-04-23 23:30 A |  | 100% | finish no earlier than 2005-04-23 00:00 | 許漢昇 [25%]; 周尚樺 [12.5%] | 19.5h | 19.5h | 1,365 | 1,365 |
| 53 | 1.7.3.2 | 前端網頁美工設計 | 0.5d | 2005-04-25 19:30 A | 2005-04-25 23:30 A | 52 | 100% | finish no later than 2005-04-26 00:00 | 許漢昇; 周尚樺 | 7h | 7h | 490 | 490 |
| 54 | 1.7.3.3 | 前端網頁撰寫 | 0.5d | 2005-04-25 08:00 A | 2005-04-25 14:00 A |  | 100% | start no later than 2005-04-25 08:00 | 許漢昇; 周尚樺 | 7h | 7h | 490 | 490 |
| 55 | 1.7.3.4 | 前端美工撰寫 | 1.88d | 2005-05-05 22:00 A | 2005-05-06 23:30 A | 54 | 100% | finish no later than 2005-05-07 00:00 | 許漢昇; 周尚樺 | 27h | 27h | 1,890 | 1,890 |
| 56 | 1.7.4 | **更改UDDI規範** | 7d | 2005-04-19 08:00 A | 2005-04-23 11:00 A |  | 100% |  |  | 49h | 49h | 3,430 | 3,430 |
| 57 | 1.7.4.1 | 討論系統所需規範 | 7d | 2005-04-19 08:00 A | 2005-04-23 11:00 A |  | 100% | start no later than 2005-04-19 08:00 | 黃鈺雯 [37.5%] | 21h | 21h | 1,470 | 1,470 |
| 58 | 1.7.4.2 | 規劃出系統所需規範 | 7d | 2005-04-19 08:00 A | 2005-04-23 11:00 A |  | 100% | start no later than 2005-04-19 08:00 | 陳瑋 [25%]; 高振展 [25%] | 28h | 28h | 1,960 | 1,960 |
| 59 | 1.7.5 | **UDDI主系統建置** | 8.38d? | 2005-06-04 08:00 A | 2005-06-08 23:00 A |  | 100% |  |  | 51.47h | 51.47h | 3,602.67 | 3,602.67 |
| 60 | 1.7.5.1 | **後台管理系統** | 5.06d? | 2005-06-04 08:00 A | 2005-06-06 23:30 A |  | 100% |  |  | 23.3h | 23.3h | 1,631 | 1,631 |
| 61 | 1.7.5.1.1 | 資料庫設計雛型 | 1d? | 2005-06-04 08:00 A | 2005-06-04 18:00 A |  | 100% | start no later than 2005-06-04 08:00 | 羅振誠 [10%] | 0.8h | 0.8h | 56 | 56 |
| 62 | 1.7.5.1.2 | 會員管理系統與資料庫應用 | 2.75d? | 2005-06-04 11:30 A | 2005-06-05 21:00 A |  | 100% | start no later than 2005-06-06 08:00 | 魏孟成 | 8h | 8h | 560 | 560 |
| 63 | 1.7.5.1.3 | 會員管理系統撰寫 | 2d | 2005-06-04 18:10 A | 2005-06-05 20:40 A |  | 100% | start no later than 2005-06-06 08:00 | 許漢昇 | 3h | 3h | 210 | 210 |
| 64 | 1.7.5.1.4 | 會員管理系統測試 | 2.04d? | 2005-06-04 18:10 A | 2005-06-05 21:00 A | 63 | 100% | start no later than 2005-06-06 08:00 | 周尚樺 [75%] | 5.5h | 5.5h | 385 | 385 |
| 65 | 1.7.5.1.5 | 後台管理系統上線 | 3.75d | 2005-06-04 20:30 A | 2005-06-06 23:30 A | 64 | 100% | start no later than 2005-06-07 08:00 | 陳瑋 [50%]; 高振展 [50%] | 6h | 6h | 420 | 420 |
| 66 | 1.7.5.2 | **UDDI系統** | 5.35d | 2005-06-05 20:40 A | 2005-06-08 23:00 A |  | 100% |  |  | 28.17h | 28.17h | 1,971.67 | 1,971.67 |
| 67 | 1.7.5.2.1 | 發佈服務撰寫 | 1.81d | 2005-06-06 18:00 A | 2005-06-07 19:00 A | 56 | 100% | start no later than 2005-06-07 08:00 | 羅振誠 [37.5%] | 3h | 3h | 210 | 210 |
| 68 | 1.7.5.2.2 | 查詢服務撰寫 | 3.38d | 2005-06-06 09:00 A | 2005-06-07 23:30 A | 56 | 100% | start no later than 2005-06-07 08:00 | 魏孟成 [37.5%] | 3h | 3h | 210 | 210 |
| 69 | 1.7.5.2.3 | 發佈紀錄撰寫 | 4.73d | 2005-06-05 20:40 A | 2005-06-08 18:00 A | 56 | 100% | start no later than 2005-06-07 08:00 | 許漢昇 [20%] | 1.67h | 1.67h | 116.67 | 116.67 |
| 70 | 1.7.5.2.4 | UDDI系統測試 | 5.31d | 2005-06-05 21:00 A | 2005-06-08 23:00 A | 67, 68, 69 | 100% | start no later than 2005-06-07 08:00 | 周尚樺 | 14.5h | 14.5h | 1,015 | 1,015 |
| 71 | 1.7.5.2.5 | UDDI系統上線 | 2.56d | 2005-06-07 08:00 A | 2005-06-08 17:00 A | 70 | 100% | start no later than 2005-06-07 08:00 | 陳瑋 [75%]; 高振展 [75%] | 6h | 6h | 420 | 420 |
| 72 | 1.7.6 | **系統與網站整合** | 6.25d | 2005-06-08 08:00 A | 2005-06-11 19:30 A |  | 100% |  |  | 24.9h | 24.9h | 1,743 | 1,743 |
| 73 | 1.7.6.1 | 前端與後端之整合 | 0.38d | 2005-06-08 08:00 A | 2005-06-08 14:00 A | 51, 59 | 100% | start no later than 2005-06-08 08:00 | 魏孟成 [50%] | 1.5h | 1.5h | 105 | 105 |
| 74 | 1.7.6.2 | 美工改版 | 4.75d | 2005-06-08 08:00 A | 2005-06-10 21:00 A |  | 100% | start no later than 2005-06-08 08:00 | 羅振誠 [12.5%]; 許漢昇 [50%] | 5h | 5h | 350 | 350 |
| 75 | 1.7.6.3 | 網站整合測試1 | 4d | 2005-06-09 14:30 A | 2005-06-11 19:30 A |  | 100% | start no later than 2005-06-10 08:00 | 周尚樺 [50%]; 黃鈺雯 [20%] | 7h | 7h | 490 | 490 |
| 76 | 1.7.6.4 | 修改整合問題 | 4.56d | 2005-06-09 08:00 A | 2005-06-11 19:30 A | 75 | 100% | start no later than 2005-06-09 08:00 | 羅振誠 [5%]; 魏孟成 [37.5%] | 3.4h | 3.4h | 238 | 238 |
| 77 | 1.7.6.5 | 網站整合測試2 | 0.75d | 2005-06-11 13:30 A | 2005-06-11 19:30 A |  | 100% | finish no earlier than 2005-06-10 00:00 | 陳瑋 [66.7%]; 高振展 | 8h | 8h | 560 | 560 |

| ID | WBS | Task | Duration | Start | Finish | Predecessors | Complete | Constraint | Resources | Work | Actual work | Cost | Actual cost |
| --- | --- | --- | --- | --- | --- | --- | --- | --- | --- | --- | --- | --- | --- |
| 78 | 1.7.7 | **系統上線** | 0.2d | 2005-06-24 10:24 A | 2005-06-24 12:00 A |  | 100% |  |  |  |  |  |  |
| 79 | 1.7.7.1 | 系統上線與實測 | 0.2d | 2005-06-24 10:24 A | 2005-06-24 12:00 A | 72 | 100% | must finish on 2005-06-24 12:00 | 陳瑋 |  |  |  |  |
| 80 | 1.8 | **與專題指導老師開會** | 99d | 2005-04-20 08:00 A | 2005-06-17 19:00 A |  | 100% |  |  | 17.68h | 17.68h | 1,237.6 | 1,237.6 |
| 81 | 1.8.1 | 與專題指導老師開會 1 | 0.2d | 2005-04-20 08:00 A | 2005-04-20 10:36 A | 11 | 100% | start no later than 2005-04-20 08:00 | 周尚樺 [20%]; 羅振誠 [20%]; 黃鈺雯 [20%]; 戚玉樑老師 [20%]; 高振展 [20%]; 陳瑋 [20%]; 魏孟成 [20%] | 2.24h | 2.24h | 156.8 | 156.8 |
| 82 | 1.8.2 | 與專題指導老師開會 2 | 0.2d | 2005-04-27 08:00 A | 2005-04-27 10:36 A | 12 | 100% | start no later than 2005-04-27 08:00 | 周尚樺 [20%]; 羅振誠 [20%]; 黃鈺雯 [20%]; 戚玉樑老師 [20%]; 高振展 [20%]; 陳瑋 [20%]; 魏孟成 [20%] | 2.24h | 2.24h | 156.8 | 156.8 |
| 83 | 1.8.3 | 與專題指導老師開會 3 | 0.2d | 2005-05-04 08:00 A | 2005-05-04 10:36 A | 13 | 100% | start no later than 2005-05-04 08:00 | 周尚樺 [20%]; 羅振誠 [20%]; 許漢昇 [25%]; 黃鈺雯 [20%]; 戚玉樑老師 [20%]; 高振展 [20%]; 陳瑋 [20%]; 魏孟成 [20%] | 2.64h | 2.64h | 184.8 | 184.8 |
| 84 | 1.8.4 | 與專題指導老師開會 4 | 0.2d | 2005-05-11 08:00 A | 2005-05-11 10:36 A | 14 | 100% | start no later than 2005-05-11 08:00 | 周尚樺 [20%]; 羅振誠 [20%]; 許漢昇 [25%]; 黃鈺雯 [20%]; 戚玉樑老師 [20%]; 高振展 [20%]; 陳瑋 [20%]; 魏孟成 [20%] | 2.64h | 2.64h | 184.8 | 184.8 |
| 85 | 1.8.5 | 與專題指導老師開會 5 | 0.2d | 2005-05-18 08:00 A | 2005-05-18 10:36 A | 15 | 100% | start no later than 2005-05-18 08:00 | 周尚樺 [20%]; 羅振誠 [20%]; 許漢昇 [25%]; 黃鈺雯 [20%]; 戚玉樑老師 [20%]; 高振展 [20%]; 陳瑋 [20%]; 魏孟成 [20%] | 2.64h | 2.64h | 184.8 | 184.8 |
| 86 | 1.8.6 | 與專題指導老師開會 6 | 0.2d | 2005-05-25 08:00 A | 2005-05-25 10:36 A | 16 | 100% | start no later than 2005-05-25 08:00 | 周尚樺 [20%]; 羅振誠 [20%]; 許漢昇 [25%]; 黃鈺雯 [20%]; 戚玉樑老師 [20%]; 高振展 [20%]; 陳瑋 [20%]; 魏孟成 [20%] | 2.64h | 2.64h | 184.8 | 184.8 |
| 87 | 1.8.7 | 與專題指導老師開會 7 | 0.2d | 2005-06-03 08:00 A | 2005-06-03 10:36 A | 17 | 100% | start no later than 2005-06-03 08:00 | 周尚樺 [20%]; 羅振誠 [20%]; 許漢昇 [25%]; 黃鈺雯 [20%]; 戚玉樑老師 [20%]; 高振展 [20%]; 陳瑋 [20%]; 魏孟成 [20%] | 2.64h | 2.64h | 184.8 | 184.8 |
| 88 | 1.8.8 | 與專題指導老師開會 8 | 1.12d | 2005-06-10 08:00 A | 2005-06-10 19:00 A | 18 | 100% | start no later than 2005-06-10 08:00 | 周尚樺 [20%]; 羅振誠 [20%]; 許漢昇 [25%]; 黃鈺雯 [20%]; 戚玉樑老師 [20%]; 高振展 [20%]; 陳瑋 [20%]; 魏孟成 [20%] |  |  |  |  |
| 89 | 1.8.9 | 與專題指導老師開會 9 | 1.12d | 2005-06-17 08:00 A | 2005-06-17 19:00 A | 19 | 100% | start no later than 2005-06-17 08:00 | 周尚樺 [20%]; 羅振誠 [20%]; 許漢昇 [25%]; 黃鈺雯 [20%]; 戚玉樑老師 [20%]; 高振展 [20%]; 陳瑋 [20%]; 魏孟成 [20%] |  |  |  |  |
